Schedule from MS Project, 2022-02-24 to 2022-09-09, costs in ₽, A marks actual dates.
SPecialiST RePack

## Calendars

- Стандартный: Mon-Fri 09:00-13:00, 14:00-18:00; Sat-Sun off.

## Resources

| Resource | Rate |
| --- | --- |
| Руководитель | 370 |
| Директор | 270 |
| Программист | 200 |
| Бухгалтер | 200 |
| Спец. Оборудование | 200000 |
| Кубарев Вадим |  |

## Schedule

| ID | WBS | Task | Type | Duration | Start | Finish | Predecessors | Complete | Remaining | Total slack | Resources | Work | Actual work | Cost | Actual cost |
| --- | --- | --- | --- | --- | --- | --- | --- | --- | --- | --- | --- | --- | --- | --- | --- |
| 1 | 1 | **Разработка АИС для предприятия по производству и продаже хлебобулочных изделий** |  | 142d | 2022-02-24 A | 2022-09-09 |  | 97% | 4.2d | 0d | Кубарев Вадим | 2528h | 1353.6h | 558,560 | 549,728 |
| 2 | 1.1 | Старт проекта | milestone | 0d | 2022-02-24 A | 2022-02-24 A |  | 100% |  |  | Бухгалтер; Директор; Программист; Руководитель |  |  |  |  |
| 3 | 1.2 | **Этап 1 Подготовительный этап** |  | 7d | 2022-02-24 A | 2022-03-04 A |  | 100% |  |  |  | 88h | 88h | 28,240 | 28,240 |
| 4 | 1.2.1 | Интервьюироание сотрудников и владельца предприятия |  | 2d | 2022-02-24 A | 2022-02-25 A | 2 | 100% |  |  | Бухгалтер; Директор; Руководитель | 48h | 48h | 13,440 | 13,440 |
| 5 | 1.2.2 | Анализ предметной области |  | 5d | 2022-02-28 A | 2022-03-04 A | 4 | 100% |  |  | Руководитель | 40h | 40h | 14,800 | 14,800 |
| 6 | 1.3 | **Этап 2 Составление технического задания** |  | 12d | 2022-03-07 A | 2022-03-22 A |  | 100% |  |  |  | 128h | 128h | 37,120 | 37,120 |
| 7 | 1.3.1 | Формирование требование к АИС |  | 4d | 2022-03-07 A | 2022-03-10 A | 5 | 100% |  |  | Руководитель; Бухгалтер | 64h | 64h | 18,240 | 18,240 |
| 8 | 1.3.2 | Разработка бизнес-процессов |  | 3d | 2022-03-11 A | 2022-03-15 A | 7 | 100% |  |  | Директор | 24h | 24h | 6,480 | 6,480 |
| 9 | 1.3.3 | Формирование вариантов использования |  | 3d | 2022-03-16 A | 2022-03-18 A | 8 | 100% |  |  | Директор | 24h | 24h | 6,480 | 6,480 |
| 10 | 1.3.4 | Документирование ТЗ |  | 2d | 2022-03-21 A | 2022-03-22 A | 9 | 100% |  |  | Руководитель | 16h | 16h | 5,920 | 5,920 |
| 11 | 1.4 | Утверждено ТЗ | milestone | 0d | 2022-03-22 A | 2022-03-22 A | 10 | 100% |  |  | Руководитель; Директор |  |  |  |  |
| 12 | 1.5 | **Этап 3 Планирование и проектирование системы** |  | 37d | 2022-03-23 A | 2022-05-12 A |  | 100% |  |  |  | 440h | 440h | 126,080 | 126,080 |
| 13 | 1.5.1 | Составление плана разработки системы |  | 10d | 2022-03-23 A | 2022-04-05 A | 11 | 100% |  |  | Руководитель | 80h | 80h | 29,600 | 29,600 |
| 14 | 1.5.2 | **Проектирование** |  | 9d | 2022-04-06 A | 2022-04-18 A | 13 | 100% |  |  |  | 72h | 72h | 14,400 | 14,400 |
| 15 | 1.5.2.1 | Разработка схем баз данных |  | 3d | 2022-04-06 A | 2022-04-08 A | 13 | 100% |  |  | Программист | 24h | 24h | 4,800 | 4,800 |
| 16 | 1.5.2.2 | Проектирование ПК |  | 6d | 2022-04-11 A | 2022-04-18 A | 15 | 100% |  |  | Программист | 48h | 48h | 9,600 | 9,600 |
| 17 | 1.5.3 | **Эскизное проектирование** |  | 18d | 2022-04-19 A | 2022-05-12 A | 14 | 100% |  |  |  | 288h | 288h | 82,080 | 82,080 |
| 18 | 1.5.3.1 | Составление технического проекта |  | 15d | 2022-04-19 A | 2022-05-09 A | 13 | 100% |  |  | Программист; Руководитель | 240h | 240h | 68,400 | 68,400 |
| 19 | 1.5.3.2 | Выбор средств реализации проекта |  | 3d | 2022-05-10 A | 2022-05-12 A | 18 | 100% |  |  | Программист; Руководитель | 48h | 48h | 13,680 | 13,680 |
| 20 | 1.6 | Составлен план и проект АИС | milestone | 0d | 2022-05-12 A | 2022-05-12 A | 19 | 100% |  |  | Программист; Руководитель |  |  |  |  |
| 21 | 1.7 | **Этап 4 Закупка необходимых ресурсов** |  | 33d | 2022-05-13 A | 2022-06-28 A |  | 100% |  |  |  | 264h | 264h | 262,320 | 262,320 |
| 22 | 1.7.1 | Составление списка необходимых ресурсов |  | 2d | 2022-05-13 A | 2022-05-16 A | 20 | 100% |  |  | Руководитель | 16h | 16h | 5,920 | 5,920 |
| 23 | 1.7.2 | Поиск и договор с компанией-поставщиком оборудования |  | 5d | 2022-05-17 A | 2022-05-23 A | 22 | 100% |  |  | Бухгалтер | 40h | 40h | 8,000 | 8,000 |
| 24 | 1.7.3 | Подписан договор с компанией поставщиком | milestone | 0d | 2022-05-23 A | 2022-05-23 A | 23 | 100% |  |  | Бухгалтер; Директор |  |  |  |  |
| 25 | 1.7.4 | Заказ спец. Оборудования для работы АИС |  | 5d | 2022-05-24 A | 2022-05-30 A | 24 | 100% |  |  | Руководитель; Спец. Оборудование | 40h | 40h | 214,800 | 214,800 |
| 26 | 1.7.5 | Доставка, установка, подключение и настройка |  | 21d | 2022-05-31 A | 2022-06-28 A | 25 | 100% |  |  | Программист | 168h | 168h | 33,600 | 33,600 |
| 27 | 1.7.6 | Установлено и протестировано оборудование на предприятии | milestone | 0d | 2022-06-28 A | 2022-06-28 A | 26 | 100% |  |  | Программист |  |  |  |  |

| ID | WBS | Task | Type | Duration | Start | Finish | Predecessors | Complete | Remaining | Total slack | Free slack | Resources | Work | Actual work | Cost | Actual cost |
| --- | --- | --- | --- | --- | --- | --- | --- | --- | --- | --- | --- | --- | --- | --- | --- | --- |
| 28 | 1.8 | **Этап 5 Разработка системы** |  | 14d | 2022-06-29 A | 2022-07-18 A |  | 100% |  |  |  |  | 112h | 112h | 22,400 | 22,400 |
| 29 | 1.8.1 | Разработка ПО |  | 14d | 2022-06-29 A | 2022-07-18 A | 27 | 100% |  |  |  | Программист | 112h | 112h | 22,400 | 22,400 |
| 30 | 1.9 | Закончена разработка АИС | milestone | 0d | 2022-07-18 A | 2022-07-18 A | 29 | 100% |  |  |  | Программист |  |  |  |  |
| 31 | 1.10 | **Этап 6 Тестирование системы** |  | 6d | 2022-07-19 A | 2022-07-26 |  | 90% | 0.6d | 18.9d |  |  | 80h | 70.4h | 23,680 | 20,608 |
| 32 | 1.10.1 | Тестирование АИС |  | 2d | 2022-07-19 A | 2022-07-20 A | 30 | 100% |  |  |  | Программист | 16h | 16h | 3,200 | 3,200 |
| 33 | 1.10.2 | Протестирована пробная версия АИС | milestone | 0d | 2022-07-20 A | 2022-07-20 A | 32 | 100% |  |  |  | Программист |  |  |  |  |
| 34 | 1.10.3 | Внесение изменений |  | 4d | 2022-07-21 A | 2022-07-26 | 33 | 85% | 0.6d | 18.9d | 0d | Руководитель; Директор | 64h | 54.4h | 20,480 | 17,408 |
| 35 | 1.10.4 | Внесены изменения в АИС | milestone | 0d | 2022-07-26 A | 2022-07-26 | 34 | 80% | 0d | 18.9d | 0d | Директор; Руководитель |  |  |  |  |
| 36 | 1.11 | **Этап 7** |  | 21d | 2022-07-27 A | 2022-08-24 |  | 90% | 2.1d | 12d |  |  | 168h | 151.2h | 33,600 | 30,240 |
| 37 | 1.11.1 | Обучение персонала |  | 21d | 2022-07-27 A | 2022-08-24 | 35 | 90% | 2.1d | 12d | 0d | Программист | 168h | 151.2h | 33,600 | 30,240 |
| 38 | 1.12 | Закончено обучение персонала | milestone | 0d | 2022-08-24 A | 2022-08-24 | 37 | 90% | 0d | 12d |  | Программист |  |  |  |  |
| 39 | 1.13 | **Этап 8** |  | 5d | 2022-08-25 A | 2022-08-31 A |  | 100% |  |  |  |  | 40h | 40h | 8,000 | 8,000 |
| 40 | 1.13.1 | Разработка рабочей документации на АИС |  | 5d | 2022-08-25 A | 2022-08-31 A | 38 | 100% |  |  |  | Программист | 40h | 40h | 8,000 | 8,000 |
| 41 | 1.14 | **Этап 9 Внедрение системы** |  | 7d | 2022-09-01 A | 2022-09-09 |  | 79% | 1.5d | 0d |  |  | 72h | 60h | 17,120 | 14,720 |
| 42 | 1.14.1 | Представление финальной версии заказчику |  | 2d | 2022-09-01 A | 2022-09-02 A | 40 | 100% |  |  |  | Программист; Руководитель | 32h | 32h | 9,120 | 9,120 |
| 43 | 1.14.2 | Установка и запуск АИС на оборудовании |  | 5d | 2022-09-05 A | 2022-09-09 | 42 | 70% | 1.5d | 0d |  | Программист | 40h | 28h | 8,000 | 5,600 |
| 44 | 1.15 | Внедрена финальная версия АИС | milestone | 0d | 2022-09-09 A | 2022-09-09 | 43 | 65% | 0d | 0d |  | Программист |  |  |  |  |
| 45 | 1.16 | Крайний срок завершения проекта | milestone | 0d | 2022-02-24 A | 2022-02-24 A |  | 100% |  |  |  | Бухгалтер; Директор; Программист; Руководитель |  |  |  |  |
